# Cronograma

Schedule from MS Project, 2018-10-29 to 2018-12-03.

## Calendars

- Padrão: Mon-Fri 09:00-12:00, 13:00-18:00; Sat-Sun off. Exceptions (off unless hours are given): 2018-11-03 09:00-12:00, 13:00-18:00, 2018-11-11 09:00-12:00, 13:00-18:00, 2018-11-18 09:00-12:00, 13:00-18:00, 2018-12-01 09:00-12:00, 13:00-18:00.

## Resources

| Resource |
| --- |
| Analista 1 |
| Analista 2 |
| Cliente |
| Aalista 2 |
| Programador 1 |
| Programador 2 |
| Analista 3 |
| Analista 4 |
| José |
| André |
| Felippe |
| Érick |

## Schedule

| ID | WBS | Task | Type | Duration | Start | Finish | Predecessors | Resources | Work |
| --- | --- | --- | --- | --- | --- | --- | --- | --- | --- |
| 1 | 1 | **Sistema Gerenciador de Jogos** |  | 30d | 2018-10-29 09:00 | 2018-12-03 18:00 |  |  | 101h |
| 2 | 1.1 | **Prospecção** |  | 24h | 2018-10-29 09:00 | 2018-10-31 18:00 |  |  | 6h |
| 3 | 1.1.1 | **PTEC** |  | 8h | 2018-10-29 09:00 | 2018-10-29 18:00 |  |  | 4h |
| 4 | 1.1.1.1 | Estudar domínio da Aplicação | manual | 1d | 2018-10-29 09:00 | 2018-10-29 18:00 |  | André; Felippe; Érick; José | 1h |
| 5 | 1.1.1.2 | Redigir PTEC | manual | 1d | 2018-10-29 09:00 | 2018-10-29 18:00 | 4 | André | 1h |
| 6 | 1.1.1.3 | Revisar PTEC | manual | 1d | 2018-10-29 09:00 | 2018-10-29 18:00 | 5 | Érick | 1h |
| 7 | 1.1.1.4 | Aprovar PTEC | manual | 1d | 2018-10-29 09:00 | 2018-10-29 18:00 | 6 | Érick | 1h |
| 8 | 1.1.2 | **Estimativa Prel. De Tamanho** |  | 2d | 2018-10-30 09:00 | 2018-10-31 18:00 |  |  | 2h |
| 9 | 1.1.2.1 | Estimar tamanho do Projeto | manual | 0.12d | 2018-10-30 09:00 | 2018-10-30 10:00 | 7 | Érick | 1h |
| 10 | 1.1.2.2 | Revisar Estimativa de Tamanho | manual | 0.12d | 2018-10-30 10:00 | 2018-10-30 11:00 | 9 | Felippe | 1h |
| 11 | 1.2 | **Análise** |  | 3d | 2018-10-31 09:00 | 2018-11-02 18:00 |  |  | 18h |
| 12 | 1.2.1 | **Documento de Requisitos** |  | 2d | 2018-10-31 09:00 | 2018-11-01 18:00 |  |  | 9h |
| 13 | 1.2.1.1 | Reunir-se com a equipe de desenvolvimento | manual | 0.12d | 2018-10-30 11:00 | 2018-10-30 12:00 | 10 | André; Érick; Felippe; José | 3h |
| 14 | 1.2.1.2 | Elaborar DRE | manual | 0.5d | 2018-10-31 09:00 | 2018-10-31 14:00 | 13 | André | 4h |
| 15 | 1.2.1.3 | Revisar DRE | manual | 0.12d | 2018-10-31 14:00 | 2018-10-31 15:00 | 14 | André | 2h |
| 16 | 1.2.2 | **Matriz de Rastreabilidade Bidirecional** |  | 2d | 2018-11-01 09:00 | 2018-11-02 18:00 |  |  | 9h |
| 17 | 1.2.2.1 | Elaborar MRB | manual | 0.62d | 2018-10-31 15:00 | 2018-11-01 11:00 | 15 | José | 5h |
| 18 | 1.2.2.2 | Revisar Requisitos para confirmar entrada na MRB | manual | 2h | 2018-11-01 11:00 | 2018-11-01 14:00 | 17 | José | 2h |
| 19 | 1.2.2.3 | Revisar MRB | manual | 0.25d | 2018-11-01 14:00 | 2018-11-01 16:00 | 18 | Érick | 2h |
| 20 | 1.3 | **Projeto** |  | 2d | 2018-11-03 09:00 | 2018-11-05 18:00 |  |  | 5h |
| 21 | 1.3.1 | Elaborar DC | manual | 1d | 2018-11-01 16:00 | 2018-11-02 16:00 | 19 | José | 1h |
| 22 | 1.3.2 | Revisar DC | manual | 1d | 2018-11-02 16:00 | 2018-11-03 16:00 | 21 | José | 1h |
| 23 | 1.3.3 | Atualizar MRB | manual | 0.12d | 2018-11-03 16:00 | 2018-11-03 17:00 | 22 | José | 1h |
| 24 | 1.3.4 | **Modelo Entidade Relacionamento** |  | 2d | 2018-11-04 09:00 | 2018-11-05 18:00 |  |  | 2h |
| 25 | 1.3.4.1 | Elaborar MER | manual | 0.25d | 2018-11-04 09:00 | 2018-11-04 11:00 | 23 | Felippe | 1h |
| 26 | 1.3.4.2 | Revisar MER | manual | 0.12d | 2018-11-05 09:00 | 2018-11-05 10:00 | 25 | Érick | 1h |

| ID | WBS | Task | Type | Duration | Start | Finish | Predecessors | Resources | Work |
| --- | --- | --- | --- | --- | --- | --- | --- | --- | --- |
| 27 | 1.4 | **Implementação ou Prototipagem** |  | 20d | 2018-11-08 09:00 | 2018-12-01 18:00 |  |  | 67h |
| 28 | 1.4.1 | **Release 01** |  | 6d | 2018-11-08 09:00 | 2018-11-14 18:00 | 26 |  | 15h |
| 29 | 1.4.1.1 | Prototipar CRUDs 1 e 2 | manual | 1d | 2018-11-08 09:00 | 2018-11-08 18:00 |  | André; Érick | 13h |
| 30 | 1.4.1.2 | Verificar cronograma | manual | 1d | 2018-11-09 09:00 | 2018-11-09 18:00 | 29 | Felippe | 1h |
| 31 | 1.4.1.3 | Commitar alterações na main branch | manual | 1d | 2018-11-11 09:00 | 2018-11-11 18:00 | 30 | Érick | 1h |
| 32 | 1.4.2 | **Release 02** |  | 7d | 2018-11-14 09:00 | 2018-11-21 18:00 | 28 |  | 17h |
| 33 | 1.4.2.1 | Prototipar CRUDs 3 e 4 | manual | 1d | 2018-11-14 09:00 | 2018-11-14 18:00 |  | André; Érick | 15h |
| 34 | 1.4.2.2 | Verificar cronograma | manual | 1d | 2018-11-15 09:00 | 2018-11-15 18:00 | 33 | Felippe | 1h |
| 35 | 1.4.2.3 | Commitar alterações na main branch | manual | 1d | 2018-11-16 09:00 | 2018-11-16 18:00 | 34 | Érick | 1h |
| 36 | 1.4.3 | **Release 03** |  | 6d | 2018-11-21 09:00 | 2018-11-28 18:00 | 32 |  | 17h |
| 37 | 1.4.3.1 | Prototipar CRUDs 5 e 6 | manual | 1d | 2018-11-21 09:00 | 2018-11-21 18:00 |  | André; José | 15h |
| 38 | 1.4.3.2 | Verificar cronograma | manual | 1d | 2018-11-22 09:00 | 2018-11-22 18:00 | 37 | Felippe | 1h |
| 39 | 1.4.3.3 | Commitar alterações na main branch | manual | 1d | 2018-11-23 09:00 | 2018-11-23 18:00 | 38 | Érick | 1h |
| 40 | 1.4.4 | **Release 04** |  | 4d | 2018-11-28 09:00 | 2018-12-01 18:00 | 36 |  | 18h |
| 41 | 1.4.4.1 | Prototipar CRUDs 7 e 8 | manual | 1d | 2018-11-28 09:00 | 2018-11-28 18:00 |  | Érick; Felippe | 16h |
| 42 | 1.4.4.2 | Verificar cronograma | manual | 1d | 2018-11-29 09:00 | 2018-11-29 18:00 | 41 | Felippe | 1h |
| 43 | 1.4.4.3 | Commitar alterações na main branch | manual | 1d | 2018-11-30 09:00 | 2018-11-30 18:00 | 42 | Érick | 1h |
| 44 | 1.5 | **Fase de Fechamento** |  | 2d | 2018-12-01 09:00 | 2018-12-03 18:00 |  |  | 5h |
| 45 | 1.5.1 | Execução de Testes no Ambiente de Teste | manual | 2d | 2018-12-01 09:00 | 2018-12-03 18:00 | 40 | André; Érick; Felippe; José | 5h |
